| uid | wbsOrder | name | start | finish | notes | actualStart | actualFinish | percentComplete | milestone | dependencies |
| --- | --- | --- | --- | --- | --- | --- | --- | --- | --- | --- |
| 1 | 1 | CR-751(GRS JSON スキーマの自己説明)の適用 | 2026-10-15T02:00:00 | 2026-10-15T03:04:00 | 02:00 は土台 43b7315a、03:04 は dist の作り直し 102a8474。 | 2026-10-15T02:00:00 | 2026-10-15T03:04:00 | 100 |  |  |
| 50 | 2 | 試験待ち 6 行(DFC-2449〜2466)の仕様だけを読む試験の作成 | 2026-10-15T02:15:00 | 2026-10-15T02:32:00 | 9792e32f、合流 fb383e8f。 | 2026-10-15T02:15:00 | 2026-10-15T02:32:00 | 100 |  |  |
| 51 | 3 | 1 枚のチェックリスト(user-checklist-2026-10-15)の起草 | 2026-10-15T02:15:00 | 2026-10-15T02:41:00 | c5aef0cc・0262b17a、合流 a0dcc673。 | 2026-10-15T02:15:00 | 2026-10-15T02:41:00 | 100 |  |  |
| 52 | 4 | CR-740・752・753(覚え置き・呼び方・Ctrl の写し)の起草 | 2026-10-15T02:15:00 | 2026-10-15T03:40:00 | 06f8e4a9・f55e1f58、合流 e9d2a243。 | 2026-10-15T02:15:00 | 2026-10-15T03:40:00 | 100 |  |  |
| 53 | 5 | CR-758(依存線とマーカーの干渉解消)の起草 | 2026-10-15T02:15:00 | 2026-10-15T03:40:00 | 6201a739・d4c9a219、合流 bc632547。 | 2026-10-15T02:15:00 | 2026-10-15T03:40:00 | 100 |  |  |
| 3 | 6 | 表の窓の聞き取り(DFC-2600〜2615)の記録 | 2026-10-15T02:20:00 | 2026-10-15T03:53:00 | 4134b69f、合流 0d9fdb3f。 | 2026-10-15T02:20:00 | 2026-10-15T03:53:00 | 100 |  |  |
| 5 | 7 | 工程の強制の道具(push の見張り・検査 78〜80)の実装 | 2026-10-15T02:20:00 | 2026-10-15T04:13:00 | 076bd74c、合流 7c364713。push 済み 92015a29。 | 2026-10-15T02:20:00 | 2026-10-15T04:13:00 | 100 |  |  |
| 54 | 8 | CR-754〜757(設定パネル・タイムゾーン・ダミー実績・全体シフト)の起草 | 2026-10-15T02:20:00 | 2026-10-15T05:57:00 | d5eb0800 ほか、合流 a773ede9・6d81c750。 | 2026-10-15T02:20:00 | 2026-10-15T05:57:00 | 100 |  |  |
| 6 | 9 | JDG-2071(仕様書が正)の権威の調査 | 2026-10-15T02:40:00 | 2026-10-15T04:09:00 | bc3ee32d、合流 d60bdf78。 | 2026-10-15T02:40:00 | 2026-10-15T04:09:00 | 100 |  |  |
| 55 | 10 | 紹介頁(docs/about)のダーク切替の実装 | 2026-10-15T02:40:00 | 2026-10-15T04:05:00 | 8b7f8e54、合流 e092ae24。push 済み。 | 2026-10-15T02:40:00 | 2026-10-15T04:05:00 | 100 |  |  |
| 56 | 11 | プロジェクト計画(project-plan)の初版と直し | 2026-10-15T03:44:00 | 2026-10-15T05:09:00 | 初版 5b305da1 から吹き出しの直し 4a907919 まで。始まりはこの席の最初の測り。 | 2026-10-15T03:44:00 | 2026-10-15T05:09:00 | 100 |  |  |
| 4 | 12 | CR-753(Ctrl ドラッグの写しを移動と同じ所へ)の実装 | 2026-10-15T04:13:00 | 2026-10-15T05:53:00 | c76c7ee3、合流 bce31827。 | 2026-10-15T04:13:00 | 2026-10-15T05:53:00 | 100 |  |  |
| 8 | 13 | CR-752(公開名の呼び方と直す案の行の鍵)の仕様反映 | 2026-10-15T04:55:00 | 2026-10-15T06:15:00 | 9fec527e、合流 fc80c39b、台帳 66d989c6。 | 2026-10-15T04:55:00 | 2026-10-15T06:15:00 | 100 |  |  |
| 57 | 14 | STOP の印の仕分け(DFC-2647)の調べ | 2026-10-15T05:09:00 | 2026-10-15T05:36:00 | 75c38edf、合流 c77b5211。 | 2026-10-15T05:09:00 | 2026-10-15T05:36:00 | 100 |  |  |
| 33 | 15 | CR-759〜762(表の窓)の起草 | 2026-10-15T05:02:00 | 2026-10-15T07:08:00 | 03b7d3a8・5daf3df8、合流 65aac09f・d41292d1。 | 2026-10-15T05:02:00 | 2026-10-15T07:08:00 | 100 |  |  |
| 58 | 16 | CR-765〜768(仕様が正の原稿)の起草 | 2026-10-15T05:09:00 | 2026-10-15T06:07:00 | 04d5c89c・71a52294、合流 8e7f1419・8f6647f4。 | 2026-10-15T05:09:00 | 2026-10-15T06:07:00 | 100 |  |  |
| 60 | 17 | プロジェクト計画(project-plan)の更新と前の計画の重ね | 2026-10-15T07:12:00 | 2026-10-15T07:36:00 | 777750c3・c6110109、合流 423bd94b・d8feb1c0。 | 2026-10-15T07:12:00 | 2026-10-15T07:36:00 | 100 |  |  |
| 80 | 18 | CR-763/764(飛び先のマーカーほか)の起草の仕上げ | 2026-10-15T03:53:00 | 2026-10-15T07:30:00 | fedf4b3a、合流 7cd862bb。 | 2026-10-15T03:53:00 | 2026-10-15T07:30:00 | 100 |  |  |
| 7 | 19 | CR-740(範囲選択中の下の絵の覚え置き)の実装 | 2026-10-15T04:13:00 | 2026-10-15T07:21:00 | f2104be6 から、合流の後の基準値 f412a5e6 まで。 | 2026-10-15T04:13:00 | 2026-10-15T07:21:00 | 100 |  |  |
| 9 | 20 | CR-758(依存線とマーカーの干渉解消)の実装 | 2026-10-15T04:13:00 | 2026-10-15T07:58:00 | 合流 f6796d70、試験の結び 786a7b52。 | 2026-10-15T04:13:00 | 2026-10-15T07:58:00 | 100 |  |  |
| 23 | 21 | CR-757(全体日程のシフト)の実装 | 2026-10-15T05:58:00 | 2026-10-15T07:59:00 | ac41487f・dac985e9、合流 a43ebb9e。 | 2026-10-15T05:58:00 | 2026-10-15T07:59:00 | 100 |  |  |
| 61 | 22 | CR-769〜771(英語の慣習)の調べ | 2026-10-15T06:15:00 | 2026-10-15T07:54:00 | 合流 836723b2。 | 2026-10-15T06:15:00 | 2026-10-15T07:54:00 | 100 |  |  |
| 90 | 23 | CR-769〜771(英語の慣習)の起草と答えの記録 | 2026-10-15T07:54:00 | 2026-10-15T08:25:00 | 3eca47e4(JDG-2245〜2251)。 | 2026-10-15T07:54:00 | 2026-10-15T08:25:00 | 100 |  |  |
| 22 | 24 | CR-756(分単位のダミー実績)の実装 | 2026-10-15T08:09:00 | 2026-10-15T11:04:00 | 78f21a2b から、合流 cc5f6a9b。 | 2026-10-15T08:09:00 | 2026-10-15T11:04:00 | 100 |  |  |
| 21 | 25 | CR-755(タイムゾーンの固定の時差と略称)の実装 | 2026-10-15T08:09:00 | 2026-10-15T11:04:00 | c775ad8c から、合流 cc5f6a9b。 | 2026-10-15T08:09:00 | 2026-10-15T11:04:00 | 100 |  |  |
| 65 | 26 | CR-762(列の境目を引く幅の追従)の実装 | 2026-10-15T08:25:00 | 2026-10-15T11:04:00 | ac70da58 から、合流 cc5f6a9b。 | 2026-10-15T08:25:00 | 2026-10-15T11:04:00 | 100 |  |  |
| 72 | 27 | CR-761(列のフィルタの一覧)の実装 | 2026-10-15T08:46:00 | 2026-10-15T11:04:00 | 408d8b6b から、合流 cc5f6a9b。 | 2026-10-15T08:46:00 | 2026-10-15T11:04:00 | 100 |  |  |
| 93 | 28 | DFC-2765(変更前の輪郭が日に丸まる)の直し | 2026-10-15T08:25:00 | 2026-10-15T11:04:00 | 276c4ed7、合流 cc5f6a9b。 | 2026-10-15T08:25:00 | 2026-10-15T11:04:00 | 100 |  |  |
| 81 | 29 | CR-763(飛び先の輪のバラ色と角丸)の実装 | 2026-10-15T08:25:00 | 2026-10-15T11:04:00 | 81c43dd3 から、合流 cc5f6a9b。 | 2026-10-15T08:25:00 | 2026-10-15T11:04:00 | 100 |  |  |
| 67 | 30 | CR-759(修正案の表の語と推奨の一括採用)の実装 | 2026-10-15T08:25:00 | 2026-10-15T11:05:00 | 3c092e7b から、dist 1b4d2119。 | 2026-10-15T08:25:00 | 2026-10-15T11:05:00 | 100 |  |  |
| 69 | 31 | CR-760(表のステータスと種別の列)の実装 | 2026-10-15T08:25:00 | 2026-10-15T11:05:00 | 945331cb から、dist 1b4d2119。 | 2026-10-15T08:25:00 | 2026-10-15T11:05:00 | 100 |  |  |
| 94 | 32 | CR-764(診断マーカーを押すとレポートの行)の実装 | 2026-10-15T11:05:00 | 2026-10-15T13:04:00 | 合流 e68a78e5。 | 2026-10-15T11:05:00 | 2026-10-15T13:04:00 | 100 |  |  |
| 78 | 33 | CR-765(Agent API の呼び方の原稿)の実装 | 2026-10-15T11:05:00 | 2026-10-15T13:24:00 | 45290213、試験の合流 c0822e59。 | 2026-10-15T11:05:00 | 2026-10-15T13:24:00 | 100 |  |  |
| 88 | 34 | CR-768(保存の媒体の型)の A・B の実装 | 2026-10-15T12:19:00 | 2026-10-15T13:26:00 | 2502b5ec、試験の合流 4e9b9d9c。 | 2026-10-15T12:19:00 | 2026-10-15T13:26:00 | 100 |  |  |
| 25 | 35 | CR-754(日付の欄と設定パネル)の実装 | 2026-10-15T10:28:00 | 2026-10-15T13:55:00 | e8ce940f・233836a9、合流 1b437554。 | 2026-10-15T10:28:00 | 2026-10-15T13:55:00 | 100 |  |  |
| 83 | 36 | CR-766(文書の命令が運ぶ値の原稿)の実装 | 2026-10-15T12:19:00 | 2026-10-15T14:34:00 | de04c75b から、試験の合流 b4083756。 | 2026-10-15T12:19:00 | 2026-10-15T14:34:00 | 100 |  |  |
| 91 | 37 | CR-769(保存する名と連携の名の英語)の実装 | 2026-10-15T14:37:00 | 2026-10-15T16:06:00 | dc055615、合流 84daf515、古い試験の直し b8937413。 | 2026-10-15T14:37:00 | 2026-10-15T16:06:00 | 100 |  |  |
| 95 | 38 | CR-770(画面の英語の語)の実装 | 2026-10-15T15:44:00 | 2026-10-15T17:23:00 | 52ec9b9e、合流 b8fe0d50。 | 2026-10-15T15:44:00 | 2026-10-15T17:23:00 | 100 |  |  |
| 96 | 39 | DFC-2309(開けないファイルの通知)の直し | 2026-10-15T16:06:00 | 2026-10-15T17:20:00 | 27a4717a・f6049838、合流 ffa4a112。 | 2026-10-15T16:06:00 | 2026-10-15T17:20:00 | 100 |  |  |
| 38 | 40 | OneDrive を止める(利用者に頼む) | 2026-10-15T22:30:00 | 2026-10-15T22:30:00 | JDG-2086。GT-2 の前ならいつでもよい。 |  |  | 0 | True |  |
| 97 | 41 | 裁定待ち 約 15 問(CR-754・759〜770・DFC-2880)への答え | 2026-10-15T22:30:00 | 2026-10-16T00:00:00 | CR-759/760 の 2 問と未決 4・CR-762 Q2・CR-763 Q4・CR-754 Q6・Q7・FR-006・CR-766 Q1・CR-767 Q1〜3・CR-768 FR-096・CR-770 Q-A・Q-B・Q-D・DFC-2880。1 問 6 分で 90 分。 |  |  | 0 |  |  |
| 98 | 42 | CR-771(コードの公開名と配る物の名)の実装 | 2026-10-15T22:30:00 | 2026-10-16T00:30:00 | 体が動いている。見積 3〜4 時間の残りを S で置いた。 |  |  | 0 |  |  |
| 99 | 43 | CR-771(コードの公開名と配る物の名)の合流と確かめ | 2026-10-16T00:30:00 | 2026-10-16T01:00:00 |  |  |  | 0 |  | 98 1 0 7 |
| 100 | 44 | dist の作り直し | 2026-10-16T01:00:00 | 2026-10-16T01:30:00 |  |  |  | 0 |  |  |
| 101 | 45 | vitest 全体と Playwright 全体 | 2026-10-16T01:30:00 | 2026-10-16T02:30:00 |  |  |  | 0 |  |  |
| 39 | 46 | 一括の GT-2(GRS_PERF=1、性能の試験つき) | 2026-10-16T02:30:00 | 2026-10-16T04:30:00 | 前の巡の試験だけで 468 秒、性能の試験と時間切れの再走を見込んで 2 時間。 |  |  | 0 |  | 38 1 0 7 |
| 40 | 47 | refactor と main へ push | 2026-10-16T04:30:00 | 2026-10-16T04:30:00 | GT-2 <sha> passed の行を確かめてから。 |  |  | 0 | True |  |
| 102 | 48 | Pages の配備 | 2026-10-16T04:30:00 | 2026-10-16T05:00:00 |  |  |  | 0 |  | 40 1 0 7 |
| 37 | 49 | 1 枚のチェックリスト(user-checklist)の刷り直し | 2026-10-16T04:30:00 | 2026-10-16T05:30:00 |  |  |  | 0 |  | 40 1 0 7 |
| 41 | 50 | 1 枚のチェックリストを実物で触る | 2026-10-16T06:45:00 | 2026-10-16T22:15:00 | 1 度だけ。 |  |  | 0 |  | 102 1 0 7, 37 1 0 7 |
| 103 | 51 | 裁定のあとの小さな直し(CR-754・759・760・763・768・770) | 2026-10-16T01:00:00 | 2026-10-16T05:00:00 | 仮置き: 未決 4 件・Q4・Q6・Q7・FR-096・Q-A/B/D の答え次第。大きさ M。 |  |  | 0 |  | 97 1 0 7, 99 1 0 7 |
| 85 | 52 | CR-767(状態機械の原稿)の波 1 の実装 | 2026-10-16T00:00:00 | 2026-10-16T05:30:00 | 見積 22 時間を波 1・2 に半分ずつ、x 0.5。Q1〜3 の答えの後。 |  |  | 0 |  | 97 1 0 7 |
| 86 | 53 | CR-767(状態機械の原稿)の波 2 の実装 | 2026-10-16T05:30:00 | 2026-10-16T11:00:00 |  |  |  | 0 |  |  |
| 87 | 54 | CR-767(状態機械の原稿)の合流と確かめ | 2026-10-16T11:00:00 | 2026-10-16T11:30:00 |  |  |  | 0 |  | 86 1 0 7 |
| 104 | 55 | CR-768(保存の媒体の型)の C の実装 | 2026-10-16T11:30:00 | 2026-10-16T15:30:00 | CR-767 の後。大きさ M。 |  |  | 0 |  | 87 1 0 7 |
| 105 | 56 | CR-768(保存の媒体の型)の C の合流と確かめ | 2026-10-16T15:30:00 | 2026-10-16T16:00:00 |  |  |  | 0 |  | 104 1 0 7 |
| 106 | 57 | CR-766(命令の値の名)の Q1 の改名の新しい CR の起草 | 2026-10-16T00:00:00 | 2026-10-16T02:00:00 | Q1 の答えの後。大きさ S。 |  |  | 0 |  | 97 1 0 7 |
| 107 | 58 | CR-766(命令の値の名)の Q1 の改名の実装 | 2026-10-16T02:00:00 | 2026-10-16T06:00:00 | 大きさ M。 |  |  | 0 |  |  |
| 84 | 59 | CR-766(命令の値の名)の改名の合流と確かめ | 2026-10-16T06:00:00 | 2026-10-16T06:30:00 |  |  |  | 0 |  | 107 1 0 7 |
| 108 | 60 | CR-762(表の行の仮想化)の Q2 の実装 | 2026-10-16T06:00:00 | 2026-10-16T12:00:00 | 仮置き: Q2 で行の仮想化を採るなら。見積 約 12 時間 x 0.5。 |  |  | 0 |  |  |
| 109 | 61 | DFC-2856(形の外れた命令の束を断る)の新しい CR の起草 | 2026-10-16T00:00:00 | 2026-10-16T02:00:00 | 大きさ S。 |  |  | 0 |  | 97 1 0 7 |
| 110 | 62 | DFC-2856(形の外れた命令の束を断る)の実装 | 2026-10-16T02:00:00 | 2026-10-16T06:00:00 | 大きさ M。 |  |  | 0 |  |  |
| 111 | 63 | DFC-2855(使われない newGroupId)の直し | 2026-10-16T06:00:00 | 2026-10-16T08:00:00 | 大きさ S。 |  |  | 0 |  |  |
| 112 | 64 | DFC-2880(出荷見本が開けない)の直し | 2026-10-16T00:00:00 | 2026-10-16T04:00:00 | 裁定の後。大きさ M。 |  |  | 0 |  | 97 1 0 7 |
| 113 | 65 | DFC-557(MSPDI の拒否が黙る)の直し | 2026-10-16T04:00:00 | 2026-10-16T08:00:00 | 大きさ M。 |  |  | 0 |  |  |
| 114 | 66 | DFC-2870(実績期間の欄の幅)の直し | 2026-10-16T08:00:00 | 2026-10-16T10:00:00 | 大きさ S。 |  |  | 0 |  |  |
| 15 | 67 | T-064(公開の名 約 479 の呼び出し形, DFC-2640)の書き起こしと再検討 | 2026-10-16T05:00:00 | 2026-10-16T17:00:00 | 479 名を 1 時間 60 名ほどで 8 時間、コードと違う名の再検討 4 時間。 |  |  | 0 |  |  |
| 77 | 68 | 古い STOP の印 16 件の除去 | 2026-10-16T17:00:00 | 2026-10-16T21:00:00 | 大きさ M。 |  |  | 0 |  |  |
| 115 | 69 | edgeOf(重複した関数)の 1 つへの寄せ | 2026-10-16T12:00:00 | 2026-10-16T14:00:00 | 大きさ S。 |  |  | 0 |  |  |
| 116 | 70 | NOT_STORED_DUMMY_SIZES(手で持つ寸法)の生成への置き換え | 2026-10-16T14:00:00 | 2026-10-16T16:00:00 | 大きさ S。 |  |  | 0 |  |  |

| uid | wbsOrder | name | start | finish | notes | percentComplete | milestone | dependencies |
| --- | --- | --- | --- | --- | --- | --- | --- | --- |
| 117 | 71 | baseChangeCommandOf(名の複数形)の言い直し | 2026-10-16T16:00:00 | 2026-10-16T18:00:00 | 大きさ S。 | 0 |  |  |
| 118 | 72 | DFC-2646〜2648(STOP の仕分けで出た 3 行)の直し | 2026-10-16T08:00:00 | 2026-10-16T12:00:00 | 大きさ M。 | 0 |  |  |
| 11 | 73 | 未検討 約 45 行(DFC-611・2560〜2569・2690〜2699 ほか)のトリアージ | 2026-10-16T12:00:00 | 2026-10-16T16:00:00 | 台帳の提案だけ。大きさ M。 | 0 |  |  |
| 32 | 74 | トリアージで出た直しの実装 | 2026-10-16T16:00:00 | 2026-10-17T00:00:00 | 仮置き: 大きさ L。 | 0 |  |  |
| 18 | 75 | 仕様待ちの残り(DFC-560・631・1063〜1073 ほか)の CR の起草 | 2026-10-16T10:00:00 | 2026-10-16T14:00:00 | 大きさ M。 | 0 |  |  |
| 35 | 76 | 仕様待ちの残りの CR の実装 | 2026-10-16T14:00:00 | 2026-10-16T22:00:00 | 大きさ L。 | 0 |  |  |
| 12 | 77 | 罠の束(DFC-544・547・548・549)の実装 | 2026-10-16T21:00:00 | 2026-10-17T01:00:00 | 大きさ M。 | 0 |  |  |
| 20 | 78 | 実装待ちの残り(DFC-464・532〜562 ほか)の実装 | 2026-10-17T01:00:00 | 2026-10-17T09:00:00 | 大きさ L。 | 0 |  |  |
| 19 | 79 | DFC-730(GP-1)の実装 | 2026-10-16T22:00:00 | 2026-10-17T00:00:00 | 大きさ S。 | 0 |  |  |
| 17 | 80 | 試験待ち 9 行(DFC-550・567・641 ほか)の仕様だけを読む試験 | 2026-10-16T18:00:00 | 2026-10-16T22:00:00 | 大きさ M。 | 0 |  |  |
| 13 | 81 | 用語集の JSON 化(DFC-2175)の仕様と実装 | 2026-10-16T22:00:00 | 2026-10-17T02:00:00 | 大きさ M。 | 0 |  |  |
| 42 | 82 | チェックリストで出た直しの実装 | 2026-10-17T09:00:00 | 2026-10-17T13:00:00 | 仮置き。大きさ M。 | 0 |  | 41 1 0 7 |
| 36 | 83 | 全部の合流と台帳の締め | 2026-10-17T13:00:00 | 2026-10-17T14:00:00 | 非 AI の直しが全部入ったことを台帳で数える。 | 0 |  |  |
| 43 | 84 | 2 度目の一括の GT-2 と push | 2026-10-17T14:00:00 | 2026-10-17T16:00:00 |  | 0 |  |  |
| 27 | 85 | W4(アダプタ層の分割)の前半 CR-578→579→580 の実装 | 2026-10-17T16:00:00 | 2026-10-18T00:00:00 | 大きさ L。 | 0 |  | 43 1 0 7 |
| 28 | 86 | W4 の後半(CR-581 の後半と properties-panel)の実装 | 2026-10-18T00:00:00 | 2026-10-18T08:00:00 | 大きさ L。 | 0 |  |  |
| 29 | 87 | W5(異常系 DFC-586 ほか)の仕様 | 2026-10-18T08:00:00 | 2026-10-18T16:00:00 | JDG-1479 により W4 の後。大きさ L。 | 0 |  |  |
| 30 | 88 | W5(異常系 DFC-922 ほか)の実装と試験 | 2026-10-18T16:00:00 | 2026-10-19T00:00:00 | 大きさ L。 | 0 |  |  |
| 31 | 89 | W4・W5 の合流と GT-2・push | 2026-10-19T00:00:00 | 2026-10-19T02:00:00 |  | 0 |  | 30 1 0 7 |
| 45 | 90 | CR-695(対話欄の廃止)の実装 | 2026-10-17T16:00:00 | 2026-10-18T00:00:00 | 大きさ L。 | 0 |  | 43 1 0 7 |
| 46 | 91 | CR-697(取次が口と鍵を覚える)の実装 | 2026-10-17T16:00:00 | 2026-10-18T00:00:00 | 大きさ L。 | 0 |  | 43 1 0 7 |
| 47 | 92 | DFC-2214・2215(AM-19 の説明)の仕様と実装 | 2026-10-17T16:00:00 | 2026-10-17T20:00:00 | 大きさ M。 | 0 |  | 43 1 0 7 |
| 44 | 93 | 正式公開の判断(JDG-1740) | 2026-10-19T06:45:00 | 2026-10-19T06:45:00 | 解明・リファクタ(W4・W5)・分刻みの日程が終わったことを確かめる。AI 連携は待たない。 | 0 | True | 31 1 0 7 |
| 48 | 94 | AI 連携の合流と GT-2・push | 2026-10-19T02:00:00 | 2026-10-19T04:00:00 |  | 0 |  | 45 1 0 7, 46 1 0 7, 47 1 0 7 |
| 49 | 95 | 計画の終わり | 2026-10-19T06:45:00 | 2026-10-19T06:45:00 |  | 0 | True | 44 1 0 7 |
